# planejamento_proj

Schedule from MS Project, 2019-02-05 to 2019-06-28, 5 hours a day, A marks actual dates.

## Calendars

- Padrão: Mon-Fri 09:00-11:30, 12:30-15:00; Sat-Sun off. Exceptions (off unless hours are given): 2019-03-19 09:00-12:00, 13:00-18:00, 19:00-23:00.

## Schedule

| ID | WBS | Task | Duration | Start | Finish | Predecessors | Complete | Remaining | Baseline start | Baseline finish | Baseline duration | Total slack | Free slack | Constraint | Work | Actual work |
| --- | --- | --- | --- | --- | --- | --- | --- | --- | --- | --- | --- | --- | --- | --- | --- | --- |
| 1 | 1 | **Iniciação** | 3.4d | 2019-02-05 09:00 A | 2019-02-08 11:00 A |  | 100% |  | 2019-02-05 09:00 | 2019-02-08 11:00 | 3.4d |  |  |  | 3h | 3h |
| 2 | 1.1 | **Definição de escopo** | 0.4d | 2019-02-08 09:00 A | 2019-02-08 11:00 A |  | 100% |  | 2019-02-08 09:00 | 2019-02-08 11:00 | 0.4d |  |  |  | 3h | 3h |
| 3 | 1.1.1 | numero de fases(11) | 0.2d | 2019-02-08 09:00 A | 2019-02-08 10:00 A |  | 100% |  | 2019-02-08 09:00 | 2019-02-08 10:00 | 0.2d |  |  | start no earlier than 2019-02-08 09:00 | 1h | 1h |
| 4 | 1.1.2 | Mecanicas | 0.4d | 2019-02-08 09:00 A | 2019-02-08 11:00 A |  | 100% |  | 2019-02-08 09:00 | 2019-02-08 11:00 | 0.4d |  |  |  | 2h | 2h |
| 5 | 1.2 | Objetivos | 1.6d | 2019-02-05 09:00 A | 2019-02-06 13:00 A |  | 100% |  | 2019-02-05 09:00 | 2019-02-06 13:00 | 1.6d |  |  |  |  |  |
| 6 | 2 | **Planejamento** | 35.4d? | 2019-02-05 09:00 A | 2019-03-22 15:00 |  | 51% | 17.27d? | 2019-02-05 09:00 | 2019-03-22 15:00 | 35.6d? | 70d |  |  | 7.25h | 5.25h |
| 7 | 2.1 | Mecanicas | 0.4d? | 2019-02-05 09:00 A | 2019-02-05 11:00 A |  | 100% |  | 2019-02-05 09:00 | 2019-02-05 11:00 | 0.4d? |  |  | finish no earlier than 2019-02-13 15:00 | 2h | 2h |
| 8 | 2.2 | Tela de Opções | 0.2d? | 2019-03-01 09:00 A | 2019-03-01 10:00 A |  | 100% |  | 2019-03-01 09:00 | 2019-03-01 10:00 | 0.2d? |  |  | finish no earlier than 2019-03-06 15:00 | 1h | 1h |
| 9 | 2.3 | Menu de Titulo | 0.2d? | 2019-03-05 09:00 A | 2019-03-05 10:00 A |  | 100% |  | 2019-03-05 09:00 | 2019-03-05 10:00 | 0.2d? |  |  | finish no earlier than 2019-03-07 15:00 | 1h | 1h |
| 10 | 2.4 | planejamento do Game Loop | 0.25d? | 2019-03-05 09:00 A | 2019-03-05 10:15 A |  | 100% |  | 2019-03-05 09:00 | 2019-03-05 10:15 | 0.25d? |  |  | finish no earlier than 2019-03-13 15:00 | 1.25h | 1.25h |
| 11 | 2.5 | planejamento da Área 1 | 1d? | 2019-03-22 09:00 | 2019-03-22 15:00 |  |  |  | 2019-03-22 09:00 | 2019-03-22 15:00 | 1d? | 70d |  | start no earlier than 2019-03-22 09:00 | 2h |  |
| 12 | 3 | **Desenvolvimento** | 80.4d? | 2019-02-15 09:00 A | 2019-06-05 15:00 |  | 25% | 59.92d? | 2019-02-15 09:00 | 2019-06-05 15:00 | 80.6d? | 10d | 9d |  | 52h | 51.92h |
| 13 | 3.1 | **Mecanica Central** | 10.2d? | 2019-02-15 09:00 A | 2019-03-01 10:00 A | 7 | 100% |  | 2019-02-15 09:00 | 2019-03-01 10:00 | 10.2d? |  |  |  | 20.5h | 20.5h |
| 14 | 3.1.1 | Movimentação | 1.6d? | 2019-02-15 09:00 A | 2019-02-18 13:00 A |  | 100% |  | 2019-02-15 09:00 | 2019-02-18 13:00 | 1.6d? |  |  | finish no earlier than 2019-02-20 15:00 | 8h | 8h |
| 15 | 3.1.2 | Pulo | 0.8d? | 2019-02-21 09:00 A | 2019-02-21 14:00 A | 14 | 100% |  | 2019-02-21 09:00 | 2019-02-21 14:00 | 0.8d? |  |  | finish no earlier than 2019-02-22 15:00 | 4h | 4h |
| 16 | 3.1.3 | Magic Regen | 0.4d? | 2019-02-26 09:00 A | 2019-02-26 11:00 A | 15 | 100% |  | 2019-02-26 09:00 | 2019-02-26 11:00 | 0.4d? |  |  | finish no earlier than 2019-02-25 15:00 | 2h | 2h |
| 17 | 3.1.4 | Magic Attack | 0.4d? | 2019-02-26 09:00 A | 2019-02-26 11:00 A | 15 | 100% |  | 2019-02-26 09:00 | 2019-02-26 11:00 | 0.4d? |  |  |  | 2h | 2h |
| 18 | 3.1.5 | Magic Down Arrow | 0.25d? | 2019-02-27 09:00 A | 2019-02-27 10:15 A | 15 | 100% |  | 2019-02-27 09:00 | 2019-02-27 10:15 | 0.25d? |  |  | start no earlier than 2019-02-27 09:00 | 1.25h | 1.25h |
| 19 | 3.1.6 | Dash Movement | 0.25d? | 2019-02-28 09:00 A | 2019-02-28 10:15 A | 15 | 100% |  | 2019-02-28 09:00 | 2019-02-28 10:15 | 0.25d? |  |  |  | 1.25h | 1.25h |
| 20 | 3.1.7 | Double Jump | 0.2d? | 2019-03-01 09:00 A | 2019-03-01 10:00 A | 15 | 100% |  | 2019-03-01 09:00 | 2019-03-01 10:00 | 0.2d? |  |  | start no earlier than 2019-03-01 09:00 | 1h | 1h |
| 21 | 3.1.8 | espadas multi coloridas | 0.2d? | 2019-03-01 09:00 A | 2019-03-01 10:00 A | 15 | 100% |  | 2019-03-01 09:00 | 2019-03-01 10:00 | 0.2d? |  |  | start no earlier than 2019-02-01 09:00 | 1h | 1h |
| 22 | 3.2 | **Menu Inicial** | 4.15d? | 2019-03-04 09:00 A | 2019-03-08 09:45 A | 9 | 100% |  | 2019-03-04 09:00 | 2019-03-08 09:45 | 4.15d? |  |  |  | 8.5h | 8.5h |
| 23 | 3.2.1 | Menu de Introdução ao jogo | 0.1d? | 2019-03-04 09:00 A | 2019-03-04 09:30 A |  | 100% |  | 2019-03-04 09:00 | 2019-03-04 09:30 | 0.1d? |  |  | start no earlier than 2019-03-04 09:00 | 0.5h | 0.5h |
| 24 | 3.2.2 | Opções no titulo | 0.2d? | 2019-03-04 09:00 A | 2019-03-04 10:00 A |  | 100% |  | 2019-03-04 09:00 | 2019-03-04 10:00 | 0.2d? |  |  | start no earlier than 2019-03-04 09:00 | 1h | 1h |
| 25 | 3.2.3 | Aparencia transitoria do menu novo jogo carregar deletar | 0.2d? | 2019-03-05 09:00 A | 2019-03-05 10:00 A |  | 100% |  | 2019-03-05 09:00 | 2019-03-05 10:00 | 0.2d? |  |  | start no earlier than 2019-03-05 09:00 | 1h | 1h |
| 26 | 3.2.4 | aparencia transitoria do menu de idiomas | 0.2d? | 2019-03-07 09:00 A | 2019-03-07 10:00 A |  | 100% |  | 2019-03-07 09:00 | 2019-03-07 10:00 | 0.2d? |  |  | start no earlier than 2019-03-07 09:00 | 1h | 1h |
| 27 | 3.2.5 | aparencia transitoria do menu de creditos | 0.15d? | 2019-03-08 09:00 A | 2019-03-08 09:45 A |  | 100% |  | 2019-03-08 09:00 | 2019-03-08 09:45 | 0.15d? |  |  | start no earlier than 2019-03-08 09:00 | 0.75h | 0.75h |
| 28 | 3.2.6 | funcionalidades do menu iniciar/carregar/deletar | 0.4d? | 2019-03-06 09:00 A | 2019-03-06 11:00 A | 25 | 100% |  | 2019-03-06 09:00 | 2019-03-06 11:00 | 0.4d? |  |  | start no earlier than 2019-03-06 09:00 | 2h | 2h |
| 29 | 3.2.7 | funcionalidades do menu de opções | 0.15d? | 2019-03-08 09:00 A | 2019-03-08 09:45 A |  | 100% |  | 2019-03-08 09:00 | 2019-03-08 09:45 | 0.15d? |  |  | start no earlier than 2019-03-08 09:00 | 0.75h | 0.75h |
| 30 | 3.2.8 | funcionalidades do menu de idiomas | 0.15d? | 2019-03-08 09:00 A | 2019-03-08 09:45 A | 26 | 100% |  | 2019-03-08 09:00 | 2019-03-08 09:45 | 0.15d? |  |  | start no earlier than 2019-02-08 09:00 | 0.75h | 0.75h |
| 31 | 3.2.9 | funcionalidades do menu de creditos | 0.15d? | 2019-03-08 09:00 A | 2019-03-08 09:45 A | 27 | 100% |  | 2019-03-08 09:00 | 2019-03-08 09:45 | 0.15d? |  |  | start no earlier than 2019-02-08 09:00 | 0.75h | 0.75h |

Notes:
- 2: O jogo é baseado em upgrades que dão acesso a novas áreas do game / Conteudo: / Estão projetados 11 fases cada uma com um chefe principal e inimigos únicos. As fases podem ter chefes secundários e minichefes. / As mecanicas estão descritas no capitulo 2[planejamento]. / Adicionais: / Estão projetados como adicionais, sistema de recompensa diaria, vídeo recompensado / Upgrades: / Espadas Multicoloridas, abrem barreiras em concordância com as cores das espadas. / magicAttack / DoubleJump / DownArrowMagicAttack / DashMovement / data de entrega estimada: / 28/06/2019 / Prioridade do projeto: / baixa
- 4: Espadas Multicoloridas, abrem barreiras em concordância com as cores das espadas. / magicAttack / DoubleJump / DownArrowMagicAttack / DashMovement
- 5: Defina os objetivos do projeto com relação ao problema de negócios. Descreva quais imperativos de missão/estratégicos de nível mais alto são atendidos com a execução desse projeto. / Declaração de objetivo do projeto: / Criar um jogo no gênero plataforma 2D com subgênero metroidevania / lançar inicialmente para aparelhos android / lançar posteriormente para PC via Steam ou GameJolt/itch.io / lançar posteriormente para N3DS / Métricas de sucesso: / superar mil instalações em aparelhos android / Comparação de estado atual com estado futuro: / Estado atualEstado futuro / Mecanica basica implementada,faltam movimentos especiaisJogo completo com fases e chefes
- 7: O jogador pode realizar as seguintes ações ao iniciar o jogo: / Andar / Pular / Atacar / Recuperar sua energia com uso de mana / Atacar para cima / Atacar para baixo e pra cima durante o pulo / Atacar durante o pulo / Essas ações são realizadas no dispositivos androide por meio de controles dispostos na tela. / A movimentação é feita com uma alavanca virtual disposta na tela do dispositivo android. / O pulo e o ataque são executados pressionando botões posicionados na tela do dispositivo android. / A energia pode ser recuperada segurando um botão disposto na tela do aparelho. / Colocando a alavanca para cima e pressionando ataque o personagem ataca pra cima. / No ar colocando a alavanca pra baixo e pressionando ataque ele ataca pra baixo, colocando a alavanca pra cima e pressionando ataque o personagem ataca pra cima no ar e pressionando ataque sem colocar pra cima ou pra baixo é executado o ataque comum no ar. / Upgrade: / Durante o jogo o personagem aprende upgrades que possibilitam o acesso a novas áreas, estes são: / Pulo duplo / Movimento de dash / Magia / Descida em flecha magica / Espadas multicoloridas (estas abrem barreiras particulares relacionadas as cores das espadas)
- 8: planejamento da tela de Opções com a previsão de implementações / Iniciar Jogo / opções / idioma / créditos / ---> iniciar jogo[baseado em hollow knight] / load game/new game/delete game / -->opções / volume musica / volume sound effects / ---> idioma / pt-br / en-google / ---> creditos / eu mesmo / RPG Maker for Music[será que pode?]
- 9: planejamento dos Menus / Inventario / Emblemas / Mapa / [talvez...] Bestiario / --->Inventario / Updates / Coletáveis / [talvez] Dinheiro / --->Emblemas / numero de encaixes / emblemas disponíveis e suas descrições / --->Mapa / Necessário um bom planejamento, decidir se usar modelo hollow knight ou SOTN/metroid

| ID | WBS | Task | Duration | Start | Finish | Predecessors | Complete | Remaining | Baseline start | Baseline finish | Baseline duration | Total slack | Constraint | Work | Actual work |
| --- | --- | --- | --- | --- | --- | --- | --- | --- | --- | --- | --- | --- | --- | --- | --- |
| 32 | 3.3 | **Gerenciamento de dados do jogo(Game Loop)** | 5.4d? | 2019-03-06 09:00 A | 2019-03-13 11:00 A |  | 100% |  | 2019-03-06 09:00 | 2019-03-13 11:00 | 7d? |  |  | 11.5h | 11.5h |
| 33 | 3.3.1 | Keyvars | 0.55d? | 2019-03-06 09:00 A | 2019-03-06 12:45 A |  | 100% |  | 2019-03-06 09:00 | 2019-03-06 12:45 | 0.55d? |  | start no earlier than 2019-03-06 09:00 | 2.75h | 2.75h |
| 34 | 3.3.2 | SceneLoader | 0.2d? | 2019-03-07 09:00 A | 2019-03-07 10:00 A |  | 100% |  | 2019-03-07 09:00 | 2019-03-07 10:00 | 0.2d? |  | finish no earlier than 2019-03-08 15:00 | 1h | 1h |
| 35 | 3.3.3 | changeSceneInLoader | 0.35d? | 2019-03-07 09:00 A | 2019-03-07 10:45 A |  | 100% |  | 2019-03-07 09:00 | 2019-03-07 10:45 | 0.35d? |  | finish no earlier than 2019-03-08 15:00 | 1.75h | 1.75h |
| 36 | 3.3.4 | sistema de check point | 0.2d? | 2019-03-08 09:00 A | 2019-03-08 10:00 A |  | 100% |  | 2019-03-08 09:00 | 2019-03-08 10:00 | 0.2d? |  | finish no earlier than 2019-03-09 15:00 | 1h | 1h |
| 37 | 3.3.5 | sistema de inimigos se recuperando ao usar check point | 0.2d? | 2019-03-11 09:00 A | 2019-03-11 10:00 A |  | 100% |  | 2019-03-11 09:00 | 2019-03-11 10:00 | 0.2d? |  | finish no earlier than 2019-03-11 15:00 | 1h | 1h |
| 38 | 3.3.6 | lockCameraInScene | 0.1d? | 2019-03-11 09:00 A | 2019-03-11 09:30 A |  | 100% |  | 2019-03-11 09:00 | 2019-03-11 09:30 | 0.1d? |  | start no earlier than 2019-03-11 09:00 | 0.5h | 0.5h |
| 39 | 3.3.7 | ChangeSceneInGame | 0.3d? | 2019-03-12 09:00 A | 2019-03-12 10:30 A |  | 100% |  | 2019-03-12 09:00 | 2019-03-12 10:30 | 0.3d? |  | start no earlier than 2019-03-12 09:00 | 1.5h | 1.5h |
| 40 | 3.3.8 | implementação dos dados do inventario | 0.4d? | 2019-03-13 09:00 A | 2019-03-13 11:00 A |  | 100% |  | 2019-03-13 09:00 | 2019-03-13 11:00 | 0.4d? |  | start no earlier than 2019-03-13 09:00 | 2h | 2h |
| 41 | 3.4 | **Menu de Pause** | 6.4d? | 2019-03-14 09:00 A | 2019-03-20 15:00 |  | 90% | 0.66d? | 2019-03-14 09:00 | 2019-03-20 15:00 | 5d? | 65d |  | 11.5h | 11.43h |
| 42 | 3.4.1 | aparencia transitoria do menu de opções de pause | 1d? | 2019-03-14 09:00 A | 2019-03-14 15:00 A |  | 100% |  | 2019-03-14 09:00 | 2019-03-14 15:00 | 1d? |  | start no earlier than 2019-03-14 09:00 | 0.5h | 0.5h |
| 43 | 3.4.2 | aparencia transitoria do menu de emblemas | 1d? | 2019-03-14 09:00 A | 2019-03-14 15:00 A |  | 100% |  | 2019-03-14 09:00 | 2019-03-14 15:00 | 1d? |  | start no earlier than 2019-03-14 09:00 | 0.5h | 0.5h |
| 44 | 3.4.3 | aparencia transitoria do espaço do mapa | 1d? | 2019-03-14 09:00 A | 2019-03-14 15:00 A |  | 100% |  | 2019-03-14 09:00 | 2019-03-14 15:00 | 1d? |  | start no earlier than 2019-03-14 09:00 | 0.5h | 0.5h |
| 45 | 3.4.4 | aparencia transitoria do menu de updates | 1d? | 2019-03-14 09:00 A | 2019-03-14 15:00 A |  | 100% |  | 2019-03-14 09:00 | 2019-03-14 15:00 | 1d? |  | start no earlier than 2019-03-14 09:00 | 0.25h | 0.25h |
| 46 | 3.4.5 | aparencia transitoria do menu de hexagonos e pentagonos | 1d? | 2019-03-14 09:00 A | 2019-03-14 15:00 A |  | 100% |  | 2019-03-14 09:00 | 2019-03-14 15:00 | 1d? |  | start no earlier than 2019-03-14 09:00 | 0.25h | 0.25h |
| 47 | 3.4.6 | funcionalidades do menu de opções de pause | 0.5d? | 2019-03-15 09:00 A | 2019-03-15 11:30 A | 42 | 100% |  | 2019-03-15 09:00 | 2019-03-15 15:00 | 1d? |  | start no earlier than 2019-03-15 09:00 | 0.5h | 0.5h |
| 48 | 3.4.7 | funcionalidades do menu de updates | 1d? | 2019-03-15 09:00 A | 2019-03-18 11:30 A | 45 | 100% |  | 2019-03-15 09:00 | 2019-03-18 15:00 | 2d? |  | finish no earlier than 2019-03-18 15:00 | 1h | 1h |
| 49 | 3.4.8 | funcionalidades do menu de emblemas | 3.4d? | 2019-03-18 09:00 A | 2019-03-19 23:00 A | 43 | 100% |  | 2019-03-19 09:00 | 2019-03-19 15:00 | 1d? |  | start no earlier than 2019-03-18 09:00 | 7h | 7h |
| 50 | 3.4.9 | funcionalidades do menu de hexagonos e pentagonos | 2d? | 2019-03-19 17:00 A | 2019-03-20 15:00 | 46 | 25% | 1.5d? | 2019-03-19 09:00 | 2019-03-20 15:00 | 2d? | 65d | finish no earlier than 2019-03-20 15:00 |  |  |
| 51 | 3.4.10 | funcionalidades gerais do menu de pause | 4.9d? | 2019-03-15 09:00 A | 2019-03-20 15:00 |  | 95% | 0.24d? | 2019-03-15 09:00 | 2019-03-20 15:00 | 4d? | 65d | finish no earlier than 2019-03-20 15:00 | 1h | 0.93h |
| 52 | 3.5 | Área 1 | 6d? | 2019-03-20 09:00 | 2019-03-27 15:00 |  |  |  | 2019-03-20 09:00 | 2019-03-27 15:00 | 6d? | 60d | finish no earlier than 2019-03-27 15:00 |  |  |
| 53 | 3.6 | Área 2 | 6d? | 2019-03-27 09:00 | 2019-04-03 15:00 |  |  |  | 2019-03-27 09:00 | 2019-04-03 15:00 | 6d? | 55d | finish no earlier than 2019-04-03 15:00 |  |  |
| 54 | 3.7 | Área 3 | 6d? | 2019-04-03 09:00 | 2019-04-10 15:00 |  |  |  | 2019-04-03 09:00 | 2019-04-10 15:00 | 6d? | 50d | finish no earlier than 2019-04-10 15:00 |  |  |
| 55 | 3.8 | Área 4 | 6d? | 2019-04-10 09:00 | 2019-04-17 15:00 |  |  |  | 2019-04-10 09:00 | 2019-04-17 15:00 | 6d? | 45d | finish no earlier than 2019-04-17 15:00 |  |  |
| 56 | 3.9 | Área 5 | 6d? | 2019-04-17 09:00 | 2019-04-24 15:00 |  |  |  | 2019-04-17 09:00 | 2019-04-24 15:00 | 6d? | 40d | finish no earlier than 2019-04-24 15:00 |  |  |
| 57 | 3.10 | Área 6 | 6d? | 2019-04-24 09:00 | 2019-05-01 15:00 |  |  |  | 2019-04-24 09:00 | 2019-05-01 15:00 | 6d? | 35d | finish no earlier than 2019-05-01 15:00 |  |  |
| 58 | 3.11 | Área 7 | 6d? | 2019-05-01 09:00 | 2019-05-08 15:00 |  |  |  | 2019-05-01 09:00 | 2019-05-08 15:00 | 6d? | 30d | finish no earlier than 2019-05-08 15:00 |  |  |
| 59 | 3.12 | Área 8 | 6d? | 2019-05-08 09:00 | 2019-05-15 15:00 |  |  |  | 2019-05-08 09:00 | 2019-05-15 15:00 | 6d? | 25d | finish no earlier than 2019-05-15 15:00 |  |  |
| 60 | 3.13 | Área 9 | 6d? | 2019-05-15 09:00 | 2019-05-22 15:00 |  |  |  | 2019-05-15 09:00 | 2019-05-22 15:00 | 6d? | 20d | finish no earlier than 2019-05-22 15:00 |  |  |
| 61 | 3.14 | Área 10 | 6d? | 2019-05-22 09:00 | 2019-05-29 15:00 |  |  |  | 2019-05-22 09:00 | 2019-05-29 15:00 | 6d? | 15d | finish no earlier than 2019-05-29 15:00 |  |  |
| 62 | 3.15 | Área 11 | 6d? | 2019-05-29 09:00 | 2019-06-05 15:00 |  |  |  | 2019-05-29 09:00 | 2019-06-05 15:00 | 6d? | 10d | finish no earlier than 2019-06-05 15:00 |  |  |

| ID | WBS | Task | Duration | Start | Finish | Predecessors | Baseline start | Baseline finish | Baseline duration | Total slack | Constraint |
| --- | --- | --- | --- | --- | --- | --- | --- | --- | --- | --- | --- |
| 63 | 4 | **Testes/Correções/Balanceamento** | 51d? | 2019-04-10 09:00 | 2019-06-19 15:00 |  | 2019-04-10 09:00 | 2019-06-19 15:00 | 51d? | 7d |  |
| 64 | 4.1 | Testes com conhecidos | 16d? | 2019-04-10 09:00 | 2019-05-01 15:00 |  | 2019-04-10 09:00 | 2019-05-01 15:00 | 16d? | 42d | finish no earlier than 2019-05-01 15:00 |
| 65 | 4.2 | Correções | 6d? | 2019-06-05 09:00 | 2019-06-12 15:00 |  | 2019-06-05 09:00 | 2019-06-12 15:00 | 6d? | 12d | finish no earlier than 2019-06-12 15:00 |
| 66 | 4.3 | Balanceamento | 6d? | 2019-06-12 09:00 | 2019-06-19 15:00 |  | 2019-06-12 09:00 | 2019-06-19 15:00 | 6d? | 7d | finish no earlier than 2019-06-19 15:00 |
| 67 | 5 | **Publicação/Monetização/Polimento** | 8d? | 2019-06-19 09:00 | 2019-06-28 15:00 | 12 | 2019-06-19 09:00 | 2019-06-28 15:00 | 8d? | 0d |  |
| 68 | 5.1 | Monetização | 4d? | 2019-06-19 09:00 | 2019-06-24 15:00 |  | 2019-06-19 09:00 | 2019-06-24 15:00 | 4d? | 4d | finish no earlier than 2019-06-24 15:00 |
| 69 | 5.2 | Polimento | 7d? | 2019-06-19 09:00 | 2019-06-27 15:00 |  | 2019-06-19 09:00 | 2019-06-27 15:00 | 7d? | 1d | finish no earlier than 2019-06-27 15:00 |
| 70 | 5.3 | Publicação | 4d? | 2019-06-25 09:00 | 2019-06-28 15:00 |  | 2019-06-25 09:00 | 2019-06-28 15:00 | 4d? | 0d | finish no earlier than 2019-06-28 15:00 |
